# SWARM EX COMMs

Schedule from GanttProject, 2026-09-09 to 2026-10-14.

## Calendars

- Project calendar: Mon-Fri working; Sat-Sun off.

## Schedule

| ID | WBS | Task | Duration | Start | Finish | Predecessors |
| --- | --- | --- | --- | --- | --- | --- |
| 1 | 1 | **Gpredict** | 26d | 2026-09-09 | 2026-10-14 |  |
| 2 | 1.1 | Create motor test plan | 4d | 2026-09-09 | 2026-09-14 |  |
| 3 | 1.2 | Checking remaining things to raise antenna | 3d | 2026-09-15 | 2026-09-17 | 2 |
| 4 | 1.3 | Executin motor tests | 7d | 2026-09-18 | 2026-09-28 | 3 |
| 5 | 1.4 | Raising antenna | 4d | 2026-09-29 | 2026-10-02 | 4 |
| 6 | 1.5 | finding exact location of ground station | 4d | 2026-09-16 | 2026-09-21 |  |
| 7 | 1.6 | g predict tracking with TLEs | 5d | 2026-09-22 | 2026-09-28 | 6 |
| 8 | 1.7 | interface gnu with g predict | 5d | 2026-09-29 | 2026-10-05 | 7 |
| 9 | 1.8 | testing sat tracking | 7d | 2026-10-06 | 2026-10-14 | 5, 8 |
| 10 | 2 | **Set up ground station setup** | 19d | 2026-09-10 | 2026-10-06 |  |
| 11 | 2.1 | HFSS Transfer | 3d | 2026-09-15 | 2026-09-17 |  |
| 12 | 2.2 | Grab GNU and hydra from GS PC in STIG | 4d | 2026-09-10 | 2026-09-15 |  |
| 13 | 2.3 | Setup gnu and hydra on new setup | 5d | 2026-09-16 | 2026-09-22 | 12 |
| 14 | 2.4 | Get gnu and hydra talking | 10d | 2026-09-23 | 2026-10-06 | 13 |
| 15 | 3 | **Li-2 Dev Work** | 18d | 2026-09-16 | 2026-10-09 |  |
| 16 | 3.1 | MCT | 8d | 2026-09-16 | 2026-09-25 |  |
| 17 | 3.2 | SCT1 | 5d | 2026-09-28 | 2026-10-02 | 16 |
| 18 | 3.3 | SCT2 | 5d | 2026-10-05 | 2026-10-09 | 17 |
